# Project Management Project

Schedule from MS Project, 2025-10-20 to 2025-12-09, costs in $, A marks actual dates.

## Calendars

- smart bite: Mon-Fri 08:00-12:00, 13:00-17:00; Sat-Sun off. Exceptions (off unless hours are given): 2025-10-18 to 2029-10-14 08:00-12:00, 13:00-17:00 (Sunday, recurring), 2025-10-18 to 2029-10-18 (Friday, recurring).

## Resources

| Resource | Rate |
| --- | --- |
| Rokaya | 50 |
| Mahmoud | 50 |
| Retaj | 50 |
| Youssef Karim | 50 |
| Youssef mahmoud | 50 |
| Rawan | 50 |

## Schedule

| ID | WBS | Task | Type | Duration | Start | Finish | Predecessors | Complete | Remaining | Total slack | Constraint | Resources | Work | Actual work | Cost | Actual cost |
| --- | --- | --- | --- | --- | --- | --- | --- | --- | --- | --- | --- | --- | --- | --- | --- | --- |
| 1 | 1 | **Smart Bite** |  | 36.75d | 2025-10-20 A | 2025-12-09 |  | 98% | 0.78d | 0d |  |  | 966h | 948.5h | 48,300 | 47,425 |
| 2 | 1.1 | **Initiation** |  | 4d | 2025-10-20 A | 2025-10-23 A |  | 100% |  |  |  |  | 96h | 96h | 4,800 | 4,800 |
| 3 | 1.1.1 | Define project goals |  | 2d | 2025-10-20 A | 2025-10-21 A |  | 100% |  |  | start no earlier than 2025-10-20 | Rokaya; Youssef Karim | 32h | 32h | 1,600 | 1,600 |
| 4 | 1.1.2 | Project charter |  | 2d | 2025-10-21 A | 2025-10-22 A | 3SS+1d | 100% |  |  | start no earlier than 2025-10-21 | Mahmoud; Youssef Karim | 32h | 32h | 1,600 | 1,600 |
| 5 | 1.1.3 | Assemble project team |  | 1d | 2025-10-23 A | 2025-10-23 A | 4 | 100% |  |  | start no earlier than 2025-10-23 | Mahmoud; Rokaya | 16h | 16h | 800 | 800 |
| 6 | 1.1.4 | Identify stakeholder |  | 1d | 2025-10-23 A | 2025-10-23 A | 4, 5SS | 100% |  |  | start no earlier than 2025-10-23 | Rawan; Youssef mahmoud | 16h | 16h | 800 | 800 |
| 7 | 1.2 | **Planning** |  | 9d | 2025-10-23 A | 2025-11-05 |  | 90% | 0.9d | 24.75d |  |  | 160h | 144h | 8,000 | 7,200 |
| 8 | 1.2.1 | Design modeling |  | 4d | 2025-10-23 A | 2025-10-28 | 6 | 75% | 1d | 29.75d | start no earlier than 2025-10-23 | Rokaya; Retaj | 64h | 48h | 3,200 | 2,400 |
| 9 | 1.2.2 | Scope statement |  | 1d | 2025-10-26 A | 2025-10-26 A | 6FS+3d | 100% |  |  | start no earlier than 2025-10-26 | Youssef Karim; Youssef mahmoud | 16h | 16h | 800 | 800 |
| 10 | 1.2.3 | Risk analysis |  | 2d | 2025-10-29 A | 2025-10-30 A | 8, 9 | 100% |  |  | start no earlier than 2025-10-29 | Mahmoud; Rawan | 32h | 32h | 1,600 | 1,600 |
| 11 | 1.2.4 | Work Breakdown structure |  | 1d | 2025-11-03 A | 2025-11-03 A | 10 | 100% |  |  | start no earlier than 2025-11-03 | Rokaya; Youssef Karim | 16h | 16h | 800 | 800 |
| 12 | 1.2.5 | Project schedule |  | 2d | 2025-11-03 A | 2025-11-04 A | 10 | 100% |  |  | start no earlier than 2025-11-03 | Rawan; Retaj | 32h | 32h | 1,600 | 1,600 |
| 13 | 1.2.6 | Milestone 1 | milestone | 0d | 2025-11-05 | 2025-11-05 |  |  |  | 24.75d | start no earlier than 2025-11-05 |  |  |  |  |  |
| 14 | 1.3 | **Design** |  | 5d | 2025-11-05 A | 2025-11-12 |  | 99% | 0d | 19.75d |  |  | 128h | 128h | 6,400 | 6,400 |
| 15 | 1.3.1 | Architecture design |  | 1d | 2025-11-05 A | 2025-11-05 A | 12 | 100% |  |  | start no earlier than 2025-11-05 | Retaj; Rokaya | 16h | 16h | 800 | 800 |
| 16 | 1.3.2 | Create UI |  | 4d | 2025-11-05 A | 2025-11-10 A | 15SS | 100% |  |  | start no earlier than 2025-11-05 | Rawan; Youssef mahmoud | 64h | 64h | 3,200 | 3,200 |
| 17 | 1.3.3 | Prototype design |  | 3d | 2025-11-09 A | 2025-11-11 A | 15FS+3d | 100% |  |  | start no earlier than 2025-11-09 | Mahmoud; Youssef Karim | 48h | 48h | 2,400 | 2,400 |
| 18 | 1.3.4 | Milestone 2 | milestone | 0d | 2025-11-12 | 2025-11-12 |  |  |  | 19.75d | start no earlier than 2025-11-12 |  |  |  |  |  |
| 19 | 1.4 | **Execution** |  | 11d | 2025-11-10 A | 2025-11-25 A |  | 100% |  |  |  |  | 288h | 288h | 14,400 | 14,400 |
| 20 | 1.4.1 | Database implementation |  | 4d | 2025-11-10 A | 2025-11-13 A | 17SS | 100% |  |  | start no earlier than 2025-11-10 | Mahmoud; Rokaya | 64h | 64h | 3,200 | 3,200 |
| 21 | 1.4.2 | AI model training |  | 5d | 2025-11-11 A | 2025-11-17 A | 20SS, 17SS | 100% |  |  | start no earlier than 2025-11-11 | Youssef Karim; Youssef mahmoud | 80h | 80h | 4,000 | 4,000 |
| 22 | 1.4.3 | IOS and android integration |  | 3d | 2025-11-11 A | 2025-11-13 A | 20SS, 21SS, 17SS | 100% |  |  | start no earlier than 2025-11-11 | Rawan; Retaj | 48h | 48h | 2,400 | 2,400 |
| 23 | 1.4.4 | Security implementation |  | 5d | 2025-11-17 A | 2025-11-21 A | 22 | 100% |  |  | start no earlier than 2025-11-16 | Rawan; Retaj | 80h | 80h | 4,000 | 4,000 |
| 24 | 1.4.5 | Code refactoring |  | 1d | 2025-11-24 A | 2025-11-24 A | 23 | 100% |  |  | start no earlier than 2025-11-20 | Mahmoud; Youssef mahmoud | 16h | 16h | 800 | 800 |
| 25 | 1.4.6 | Milestone 3 | milestone | 0d | 2025-11-25 A | 2025-11-25 A |  | 100% |  |  |  |  |  |  |  |  |

| ID | WBS | Task | Type | Duration | Start | Finish | Predecessors | Complete | Remaining | Total slack | Constraint | Resources | Work | Actual work | Cost | Actual cost |
| --- | --- | --- | --- | --- | --- | --- | --- | --- | --- | --- | --- | --- | --- | --- | --- | --- |
| 26 | 1.5 | **Testing** |  | 9d | 2025-11-20 A | 2025-12-03 |  | 99% | 0d | 4.75d |  |  | 176h | 176h | 8,800 | 8,800 |
| 27 | 1.5.1 | Test configuration |  | 6d | 2025-11-20 A | 2025-11-27 A | 24SS | 100% |  |  | start no earlier than 2025-11-20 | Rawan; Rokaya | 96h | 96h | 4,800 | 4,800 |
| 28 | 1.5.2 | Test execution |  | 3d | 2025-11-20 A | 2025-11-24 A | 27SS | 100% |  |  | start no earlier than 2025-11-20 | Youssef Karim; Youssef mahmoud; Mahmoud | 72h | 72h | 3,600 | 3,600 |
| 29 | 1.5.3 | Test output documentation |  | 1d | 2025-12-02 A | 2025-12-02 A | 28 | 100% |  |  | start no earlier than 2025-12-02 | Retaj | 8h | 8h | 400 | 400 |
| 30 | 1.5.4 | Milestone 4 | milestone | 0d | 2025-12-03 | 2025-12-03 |  |  |  | 4.75d | start no earlier than 2025-12-03 |  |  |  |  |  |
| 31 | 1.6 | **Closure** |  | 4.75d | 2025-12-03 A | 2025-12-09 |  | 95% | 0.24d | 0d |  |  | 118h | 116.5h | 5,900 | 5,825 |
| 32 | 1.6.1 | Project documentation |  | 1d | 2025-12-03 A | 2025-12-03 A | 29 | 100% |  |  | start no earlier than 2025-12-03 | Retaj; Rokaya | 16h | 16h | 800 | 800 |
| 33 | 1.6.2 | Project closure meeting |  | 2d | 2025-12-03 A | 2025-12-04 A | 32SS | 100% |  |  | start no earlier than 2025-12-03 | Mahmoud; Rawan; Retaj; Rokaya; Youssef Karim; Youssef mahmoud | 96h | 96h | 4,800 | 4,800 |
| 34 | 1.6.3 | Product delivery |  | 0.75d | 2025-12-09 A | 2025-12-09 | 33 | 75% | 0.19d | 0d | start no earlier than 2025-12-09 | Youssef Karim | 6h | 4.5h | 300 | 225 |
